# PROYECTO MODULO UINICO DE INGRESOS MUI

Schedule from MS Project, 2008-07-25 to 2008-12-15, status date 2008-09-01, 10 hours a day, A marks actual dates.
TECNOASESORIAS

## Calendars

- Estándar: Mon-Fri 09:00-13:00, 15:00-19:00; Sat-Sun off. Exceptions (off unless hours are given): 2008-08-07, 2008-08-18, 2008-10-13, 2008-11-03, 2008-11-17, 2008-12-08.

## Resources

| Resource |
| --- |
| Analista |
| Arquitecto |
| Desarrollador Junior |
| Desarrollador Senior |
| Tester Implementador |
| DBA |
| Gerente Proyectos |
| Lider Funcional Subcuenta |
| Director Subcuenta |
| Documentador |
| Desarrollador Junior 2 |

## Schedule

| ID | WBS | Task | Type | Duration | Start | Finish | Predecessors | Complete | Remaining | Baseline start | Baseline finish | Baseline duration | Total slack | Resources | Work | Actual work |
| --- | --- | --- | --- | --- | --- | --- | --- | --- | --- | --- | --- | --- | --- | --- | --- | --- |
| 1 | 1 | **PRIMERA ITERACIÓN** |  | 76.7d | 2008-07-25 09:00 A | 2008-12-15 18:00 |  | 47% | 40.77d | 2008-07-25 09:00 | 2009-02-23 16:00 | 115.7d? | 0d |  | 2787.83h | 940.92h |
| 2 | 1.1 | **FASE CONCEPTUALIZACIÓN** |  | 27.78d | 2008-07-25 09:00 A | 2008-09-15 16:48 A |  | 100% |  | 2008-07-25 09:00 | 2008-09-15 16:48 | 27.78d |  |  | 554.67h | 554.67h |
| 3 | 1.1.1 | **Modelado Empresarial** |  | 5.6d | 2008-07-25 09:00 A | 2008-08-04 19:00 A |  | 100% |  | 2008-07-25 09:00 | 2008-08-04 19:00 | 5.6d |  |  | 111.67h | 111.67h |
| 4 | 1.1.1.1 | Concebir nuevo proyecto |  | 16h | 2008-07-25 09:00 A | 2008-07-28 19:00 A |  | 100% |  | 2008-07-25 09:00 | 2008-07-28 19:00 | 16h |  | Analista [0.8%]; Arquitecto [6.4%]; Gerente Proyectos [0.4%]; Lider Funcional Subcuenta [2.4%]; Director Subcuenta [0.4%] | 1.67h | 1.67h |
| 5 | 1.1.1.2 | Desarrollar visión inicial enfocada a los Recaudos e Ingresos |  | 16h | 2008-07-28 09:00 A | 2008-07-29 19:00 A | 4FS-5% | 100% |  | 2008-07-28 09:00 | 2008-07-29 19:00 | 16h |  | Analista [10%]; Arquitecto [60%]; Lider Funcional Subcuenta [30%] | 16h | 16h |
| 6 | 1.1.1.3 | Elaborar Caso de Negocio enfocado a los Recaudos e Ingresos |  | 24h | 2008-07-29 09:00 A | 2008-07-31 19:00 A | 5FS-5% | 100% |  | 2008-07-29 09:00 | 2008-07-31 19:00 | 24h |  | Analista [10%]; Arquitecto [90%]; Lider Funcional Subcuenta [5%] | 25.2h | 25.2h |
| 7 | 1.1.1.4 | Especificación Reglas de Negocio |  | 16h | 2008-08-01 09:00 A | 2008-08-04 19:00 A | 6 | 100% |  | 2008-08-01 09:00 | 2008-08-04 19:00 | 16h |  | Analista [10%]; Arquitecto [90%]; Lider Funcional Subcuenta [30%] | 20.8h | 20.8h |
| 8 | 1.1.1.5 | Análisis de la operación |  | 48h | 2008-07-25 09:00 A | 2008-08-01 19:00 A | 4SS | 100% |  | 2008-07-25 09:00 | 2008-08-01 19:00 | 48h |  | Analista [20%]; Arquitecto [80%]; Lider Funcional Subcuenta [20%] | 48h | 48h |
| 9 | 1.1.2 | **Requisitos** |  | 7.2d | 2008-08-05 09:00 A | 2008-08-19 19:00 A |  | 100% |  | 2008-08-05 09:00 | 2008-08-19 19:00 | 7.2d |  |  | 94.8h | 94.8h |
| 10 | 1.1.2.1 | Desarrollo de la visión del negocio |  | 16h | 2008-08-05 09:00 A | 2008-08-06 19:00 A | 7 | 100% |  | 2008-08-05 09:00 | 2008-08-06 19:00 | 16h |  | Analista [20%]; Arquitecto [80%]; Lider Funcional Subcuenta [10%] | 17.6h | 17.6h |
| 11 | 1.1.2.2 | Elaborar y detallar Casos de uso |  | 48h | 2008-08-08 09:00 A | 2008-08-15 19:00 A | 10 | 100% |  | 2008-08-08 09:00 | 2008-08-15 19:00 | 48h |  | Analista [60%]; Arquitecto [40%]; Lider Funcional Subcuenta [10%] | 52.8h | 52.8h |
| 12 | 1.1.2.3 | Detallatar requisitos del software |  | 16h | 2008-08-13 15:48 A | 2008-08-15 15:48 A | 11FS-4% | 100% |  | 2008-08-13 15:48 | 2008-08-15 15:48 | 16h |  | Analista [40%]; Arquitecto [60%]; Lider Funcional Subcuenta [10%] | 17.6h | 17.6h |
| 13 | 1.1.2.4 | Aprobar Criterios Aceptación | milestone | 8h | 2008-08-19 09:00 A | 2008-08-19 19:00 A | 11 | 100% |  | 2008-08-19 09:00 | 2008-08-19 19:00 | 8h |  | Arquitecto [5%]; Lider Funcional Subcuenta [70%]; Director Subcuenta [5%]; Gerente Proyectos [5%] | 6.8h | 6.8h |
| 14 | 1.1.3 | **Análisis y Diseño** |  | 11.78d | 2008-08-20 09:00 A | 2008-09-09 16:48 A |  | 100% |  | 2008-08-20 09:00 | 2008-09-09 16:48 | 11.78d |  |  | 189h | 189h |
| 15 | 1.1.3.1 | Análisis y Diseño de casos de uso |  | 16h | 2008-08-20 09:00 A | 2008-08-21 19:00 A | 9 | 100% |  | 2008-08-20 09:00 | 2008-08-21 19:00 | 16h |  | Analista [30%]; Arquitecto [70%] | 16h | 16h |
| 16 | 1.1.3.2 | Análisis y Diseño Reglas de Negocio |  | 16h | 2008-08-20 15:48 A | 2008-08-22 15:48 A | 15SS+3% | 100% |  | 2008-08-20 15:48 | 2008-08-22 15:48 | 16h |  | Analista [30%]; Arquitecto [70%] | 16h | 16h |
| 17 | 1.1.3.3 | Análsis y Diseño del Modelo de datos |  | 40h | 2008-08-22 15:48 A | 2008-08-29 15:48 A | 15, 16 | 100% |  | 2008-08-22 15:48 | 2008-08-29 15:48 | 40h |  | Analista [30%]; Arquitecto [70%]; DBA [5%] | 42h | 42h |
| 18 | 1.1.3.4 | Diseño de clases |  | 16h | 2008-08-29 15:48 A | 2008-09-02 15:48 A | 17 | 100% |  | 2008-08-29 15:48 | 2008-09-02 15:48 | 16h |  | Analista [30%]; Arquitecto [70%] | 16h | 16h |
| 19 | 1.1.3.5 | Diseño de Interfaces del usuario |  | 32h | 2008-09-02 15:48 A | 2008-09-08 15:48 A | 18 | 100% |  | 2008-09-02 15:48 | 2008-09-08 15:48 | 32h |  | Analista [30%]; Arquitecto [70%]; Lider Funcional Subcuenta [5%] | 33.6h | 33.6h |
| 20 | 1.1.3.6 | Diseño de la operación Actividad Secuencia y Estado |  | 40h | 2008-08-29 15:48 A | 2008-09-05 15:48 A | 18SS | 100% |  | 2008-08-29 15:48 | 2008-09-05 15:48 | 40h |  | Analista [30%]; Arquitecto [70%] | 40h | 40h |
| 21 | 1.1.3.7 | Identificación de Patrones de seguridad |  | 16h | 2008-08-29 15:48 A | 2008-09-02 15:48 A | 18SS | 100% |  | 2008-08-29 15:48 | 2008-09-02 15:48 | 16h |  | Analista [20%]; Arquitecto [80%] | 16h | 16h |
| 22 | 1.1.3.8 | Elaborar Arquitectura candidata |  | 5h | 2008-09-08 15:48 A | 2008-09-09 10:48 A | 19, 20, 21 | 100% |  | 2008-09-08 15:48 | 2008-09-09 10:48 | 5h |  | Analista [10%]; Arquitecto [90%] | 5h | 5h |
| 23 | 1.1.3.9 | Revisión de Diseño y Arquitectura | milestone | 4h | 2008-09-09 10:48 A | 2008-09-09 16:48 A | 22 | 100% |  | 2008-09-09 10:48 | 2008-09-09 16:48 | 4h |  | Arquitecto; Gerente Proyectos [10%] | 4.4h | 4.4h |
| 24 | 1.1.4 | **Implementacion** |  | 14.98d | 2008-08-20 09:00 A | 2008-09-15 16:48 A |  | 100% |  | 2008-08-20 09:00 | 2008-09-15 16:48 | 14.98d |  |  | 112.8h | 112.8h |
| 25 | 1.1.4.1 | Revisión de Código sistema actual |  | 80h | 2008-08-20 09:00 A | 2008-09-02 19:00 A | 14SS | 100% |  | 2008-08-20 09:00 | 2008-09-02 19:00 | 80h |  | Analista [70%]; Arquitecto [30%] | 80h | 80h |
| 26 | 1.1.4.2 | Elaboración prototipos Conceptuales Componentes de Diseño |  | 24h | 2008-09-09 16:48 A | 2008-09-12 16:48 A | 14 | 100% |  | 2008-09-09 16:48 | 2008-09-12 16:48 | 24h |  | Analista [10%]; Arquitecto [90%] | 24h | 24h |
| 27 | 1.1.4.3 | Planificar Integración SII |  | 8h | 2008-09-12 16:48 A | 2008-09-15 16:48 A | 26 | 100% |  | 2008-09-12 16:48 | 2008-09-15 16:48 | 8h |  | Analista [5%]; Arquitecto [95%]; DBA [5%]; Tester Implementador [5%] | 8.8h | 8.8h |

Notes:
- 19: 05/09/2008: Falta especificar los casos de uso para las interfaces de generación de consultas y reportes. / 12/09/2008: Se definen 20 reportes de los cuales 7 ya están diseñados. Quedan pendientes 13 reportes. Las 6 consultas propuestas en el caso de uso FID-ERP-CUSO020-CORE-Generación de Consultas-v01.doc fueron revisadas con el líder funcional. En lo que compete a la conceptuelización, esta tarea está finiquitada.
- 20: 05/09/2008: Se adelanta los diagramas de secuencia y estado, pero faltan los correspindeintes a la generación de consultas y reportes. / 12/09/2008: Pendiente cerrar el tema de reportes. Se definen 20 reportes de los cuales 7 ya están diseñados. Quedan pendientes 13 reportes. Las 6 consultas propuestas en el caso de uso FID-ERP-CUSO020-CORE-Generación de Consultas-v01.doc fueron revisadas con el líder funcional. En lo que compete a la conceptuelización, esta tarea está finiquitada.
- 21: 05/09/2008: Está pendiente aclarar (con infraestructura) el modo de autenticación de los terceros para el recaudo del formato fosyga 07 Sanciones Impuestas por la Superintendencia de Salud. / 12/09/2008: Para la semana del 15 al 19 Diana Amaya hará la inducción necesaria acerca del Modelos de Seguridad. / 17/09/2008: Se recibe inducción con el lider técnico Diana Carolina Amaya
- 25: 05/09/2008: Está pendiente revisar el desarrollo en Power Builder del sistema que actualmente se encuentra en el área de operaciones del Fosyga. / 12/09/2008: Igual / 15/09/2008: Se hace lectura del código pra abstraer funcionalidades, restricciones e interfaces con Contabilidad, Tesoreria y Presupuesto
- 26: 15/09/2008: Se termina la elaboración de prototipos conceptuales de diseño incluyendo componentes de AAA y seguridad, diseño de Consultas y Reportes. Componentes y mecanismos de consulta, busqueda y filtrado.
- 27: 12/09/2008: Se planea una reunión con la integración con ERP, para la semana de 15 al 19. Se tiene plenamente identificados los punto de integración con la Subcuenta Solidaridad y con el ERP según documento INTEGRACION SOLIDARIDAD.INGRESOS.doc dentro de las Especificaciones suplementarias, en lo que refiere a la conceptualización esta tarea se ha finiquitado

| ID | WBS | Task | Duration | Start | Finish | Predecessors | Complete | Remaining | Baseline start | Baseline finish | Baseline duration | Total slack | Free slack | Resources | Work | Actual work |
| --- | --- | --- | --- | --- | --- | --- | --- | --- | --- | --- | --- | --- | --- | --- | --- | --- |
| 28 | 1.1.5 | **Pruebas** | 0.8d | 2008-08-19 09:00 A | 2008-08-19 19:00 A |  | 100% |  | 2008-08-19 09:00 | 2008-08-19 19:00 | 0.8d |  |  |  | 17.2h | 17.2h |
| 29 | 1.1.5.1 | Analisis de casos de uso programación de Pruebas SGC | 5h | 2008-08-19 09:00 A | 2008-08-19 16:00 A | 11 | 100% |  | 2008-08-19 09:00 | 2008-08-19 16:00 | 5h |  |  | Analista [80%]; Arquitecto [10%]; Tester Implementador | 8.4h | 8.4h |
| 30 | 1.1.5.2 | Identificar destinos, mecanismos y motivadores de prueba | 8h | 2008-08-19 09:00 A | 2008-08-19 19:00 A | 29SS | 100% |  | 2008-08-19 09:00 | 2008-08-19 19:00 | 8h |  |  | Analista [50%]; Tester Implementador [50%]; Arquitecto [10%] | 8.8h | 8.8h |
| 31 | 1.1.6 | **Gestión de cambios** | 1.6d | 2008-08-22 09:00 A | 2008-08-25 19:00 A |  | 100% |  | 2008-08-22 09:00 | 2008-08-25 19:00 | 1.6d |  |  |  | 20.8h | 20.8h |
| 32 | 1.1.6.1 | Revisión de casos de uso Lider Funcional Subcuentas | 16h | 2008-08-22 09:00 A | 2008-08-25 19:00 A | 15 | 100% |  | 2008-08-22 09:00 | 2008-08-25 19:00 | 16h |  |  | Analista [10%]; Arquitecto [90%]; Lider Funcional Subcuenta [30%] | 20.8h | 20.8h |
| 33 | 1.1.7 | **Entorno** | 0.8d | 2008-08-20 09:00 A | 2008-08-20 19:00 A |  | 100% |  | 2008-08-20 09:00 | 2008-08-20 19:00 | 0.8d |  |  |  | 8.4h | 8.4h |
| 34 | 1.1.7.1 | Configuración y Verificación de herramientas Hardware y Software | 8h | 2008-08-20 09:00 A | 2008-08-20 19:00 A | 9 | 100% |  | 2008-08-20 09:00 | 2008-08-20 19:00 | 8h |  |  | Analista [80%]; Arquitecto [20%]; DBA [5%] | 8.4h | 8.4h |
| 35 | 1.2 | **FASE ELABORACIÓN** | 16.98d | 2008-08-26 09:00 A | 2008-09-24 10:48 |  | 78% | 3.74d | 2008-08-26 09:00 | 2008-09-25 18:48 | 18.38d | 43.72d |  |  | 141.45h | 102.47h |
| 36 | 1.2.1 | **Modelado Empresarial** | 3.2d | 2008-08-26 09:00 A | 2008-08-29 19:00 A |  | 100% |  | 2008-08-26 09:00 | 2008-08-29 19:00 | 3.2d |  |  |  | 35.2h | 35.2h |
| 37 | 1.2.1.1 | Afinamiento a los Casos de uso | 8h | 2008-08-26 09:00 A | 2008-08-26 19:00 A | 32 | 100% |  | 2008-08-26 09:00 | 2008-08-26 19:00 | 8h |  |  | Analista [10%]; Arquitecto [90%]; Lider Funcional Subcuenta [30%] | 10.4h | 10.4h |
| 38 | 1.2.1.2 | Afinamiento Especificaciones suplementarias | 16h | 2008-08-27 09:00 A | 2008-08-28 19:00 A | 37 | 100% |  | 2008-08-27 09:00 | 2008-08-28 19:00 | 16h |  |  | Analista [70%]; Arquitecto [30%]; Lider Funcional Subcuenta [10%] | 17.6h | 17.6h |
| 39 | 1.2.1.3 | Gestionar las dependencias SII Subcuentas | 8h | 2008-08-29 09:00 A | 2008-08-29 19:00 A | 38 | 100% |  | 2008-08-29 09:00 | 2008-08-29 19:00 | 8h |  |  | Arquitecto [80%]; Gerente Proyectos [5%]; DBA [5%] | 7.2h | 7.2h |
| 40 | 1.2.2 | **Requisitos** | 1.7d | 2008-09-09 16:48 A | 2008-09-11 17:48 |  | 98% | 0.03d | 2008-09-09 16:48 | 2008-09-12 10:48 | 2d | 50.42d |  |  | 5.05h | 4.95h |
| 41 | 1.2.2.1 | Afinamiento Modelos de Diseño | 2h | 2008-09-09 16:48 A | 2008-09-09 18:48 A | 14 | 100% |  | 2008-09-09 16:48 | 2008-09-10 16:48 | 8h |  |  | Analista [30%]; Arquitecto [70%]; Lider Funcional Subcuenta [5%] | 2.1h | 2.1h |
| 42 | 1.2.2.2 | Afinamiento Modelo de Servicios | 2h | 2008-09-10 16:48 A | 2008-09-10 18:48 | 41 | 95% | 0.1h | 2008-09-10 16:48 | 2008-09-11 16:48 | 8h | 51.12d |  | Analista [30%]; Arquitecto [70%] | 2h | 1.9h |
| 43 | 1.2.2.3 | Revisión y Aprobación de requisitos con Lideres SubCuentas | 1h | 2008-09-11 16:48 A | 2008-09-11 17:48 A | 42 | 100% |  | 2008-09-11 16:48 | 2008-09-12 10:48 | 4h |  |  | Arquitecto [80%]; Lider Funcional Subcuenta [10%]; Gerente Proyectos [5%] | 0.95h | 0.95h |
| 44 | 1.2.3 | **Análisis y Diseño** | 2.2d | 2008-09-09 16:48 A | 2008-09-12 12:48 |  | 96% | 0.1d | 2008-09-09 16:48 | 2008-09-16 16:48 | 4d | 0.38d | 0d |  | 17h | 16.23h |
| 45 | 1.2.3.1 | Describir la arquitectura de tiempo de ejecución | 2h | 2008-09-09 16:48 A | 2008-09-09 18:48 A | 14 | 100% |  | 2008-09-09 16:48 | 2008-09-10 16:48 | 8h |  |  | Analista [10%]; Arquitecto [90%] | 2h | 2h |
| 46 | 1.2.3.2 | Afinamiento Modelos de Diseño | 4h | 2008-09-09 16:48 A | 2008-09-10 10:48 A | 14 | 100% |  | 2008-09-09 16:48 | 2008-09-11 16:48 | 16h |  |  | Analista [10%]; Arquitecto [90%] | 4h | 4h |
| 47 | 1.2.3.3 | Análisis y Diseño Modelo de servicios | 6h | 2008-09-11 16:48 A | 2008-09-12 12:48 | 46 | 95% | 0.3h | 2008-09-11 16:48 | 2008-09-16 16:48 | 24h | 0.38d |  | Analista [20%]; Arquitecto [80%]; DBA [10%] | 6.6h | 6.27h |
| 48 | 1.2.3.4 | Diseño de patrones de seguridad | 4h | 2008-09-09 16:48 A | 2008-09-10 10:48 | 14 | 90% | 0.4h | 2008-09-09 16:48 | 2008-09-11 16:48 | 16h | 2.18d |  | Analista [10%]; Arquitecto [90%]; DBA [10%] | 4.4h | 3.97h |
| 49 | 1.2.4 | **Implementacion** | 1.2d | 2008-09-16 16:48 A | 2008-09-18 10:48 A |  | 100% |  | 2008-09-16 16:48 | 2008-09-19 16:48 | 2.4d |  |  |  | 6.2h | 6.2h |
| 50 | 1.2.4.1 | Análisis del comportamiento en tiempo de ejecución | 2h | 2008-09-16 16:48 A | 2008-09-16 18:48 A | 44 | 100% |  | 2008-09-16 16:48 | 2008-09-17 16:48 | 8h |  |  | Analista [10%]; Arquitecto [90%]; Tester Implementador [5%]; DBA [5%] | 2.2h | 2.2h |
| 51 | 1.2.4.2 | Estructurar Modelo de Implementación | 4h | 2008-09-17 16:48 A | 2008-09-18 10:48 A | 50 | 100% |  | 2008-09-17 16:48 | 2008-09-19 16:48 | 16h |  |  | Analista [30%]; Arquitecto [70%] | 4h | 4h |

Notes:
- 32: 21/08/2008: Se entrega los casos de uso del 01-11, pero por fallas en el esquema de comunicación, fueron remitidos al líder de la Subcuenta Solidaridad, quien a su vez no las remitió a las demás subcuentas. / 05/09/2008: A la fecha no líderenes funcionales de las subcuentas ECAT, Compensción y Promoción no han revisado los casos de uso (01-11) por falta de tiempo de parte de ellos aunque se les envío oportunamente. / 12/09/2008: Se revisaron los casos de uso FID-ERP-CUSO020-CORE-Generación de Consultas y FID-ERP-CUSO030-CORE-Traslados entre cuentas, quedando cerrado este tema.
- 34: 05/09/2008: El día de hoy fue asignado un recurso para el desarrollo de software, aunque el área de Infraestructura de Indra no le ha asignado equipo de cómputo. La configuración de las herramientas está prevista para llevarla a cabo en 4 horas. / 12/09/2008: Se termina la configuración de la máquina de desarrollo con todos los componentes y recursos para iniciar el desarrollo
- 41: 05/09/2008: A la fecha no líderenes funcionales de las subcuentas ECAT, Compensción y Promoción no han revisado los casos de uso (01-11) por falta de tiempo de parte de ellos aunque se les envío oportunamente.Es probable que se requiera hacer cambios de forma mas no de fondo en los diseños inicialmente propuestos. / 12/09/2008: Se finaliza el afinamiento de los modelos de diseño para la capa de presentación y queda pendiente tener en cuenta los modelos de disño de reportes y consultas, los cuales se esperan terminar en la semana del 15 al 19 / 19/09/2008: El Lider Funcional tiene pendiente la entraga formal, sin embargo se revisaron los diseños preliminares sin observaciones.
- 42: 05/09/2008: A la fecha no líderenes funcionales de las subcuentas ECAT, Compensción y Promoción no han revisado los casos de uso (01-11) por falta de tiempo de parte de ellos aunque se les envío oportunamente.Es probable que se requiera hacer cambios de forma mas no de fondo en los diseños inicialmente propuestos. / 12/09/2008: Se planea una reunión con la integración con ERP, para la semana de 15 al 19. Se tiene plenamente identificados los punto de integración con la Subcuenta Solidaridad y con el ERP según documento INTEGRACION SOLIDARIDAD.INGRESOS.doc dentro de las Especificaciones suplementarias. / 19/09/2008: Pendiente reunión con el ERP y subcuentas para tratar temas de integración
- 43: 05/09/2008: A la fecha no líderenes funcionales de las subcuentas ECAT, Compensción y Promoción no han revisado los casos de uso (01-11) por falta de tiempo de parte de ellos aunque se les envío oportunamente. Está pendiente de aprobar las reglas de negocio, las cuales han sido entregadas oportunamente, se tiene programado para el 09 y 10 de Septiembre avanzar en este tema. / 12/09/2008: Por orden de la Gerencia para el Release 2, solo entra Solidaridad, con lo cual los Casos de uso que atñen a esta subcuenta ya han sido finiquitados.
- 46: 05/09/2008: A la fecha no líderenes funcionales de las subcuentas ECAT, Compensción y Promoción no han revisado los casos de uso (01-11) por falta de tiempo de parte de ellos aunque se les envío oportunamente.Es probable que se requiera hacer cambios de forma mas no de fondo en los diseños inicialmente propuestos. / 12/09/2008: Se finaliza el afinamiento de los modelos de diseño para la capa de presentación y queda pendiente tener en cuenta los modelos de disño de reportes y consultas, los cuales se esperan terminar en la semana del 15 al 19 / 19/09/2008: El Lider Funcional tiene pendiente la entraga formal, sin embargo se revisaron los diseños preliminares sin observaciones.
- 47: 05/09/2008: A la fecha no líderenes funcionales de las subcuentas ECAT, Compensción y Promoción no han revisado los casos de uso (01-11) por falta de tiempo de parte de ellos aunque se les envío oportunamente.Es probable que se requiera hacer cambios de forma mas no de fondo en los diseños inicialmente propuestos. / 12/09/2008: Se planea una reunión con la integración con ERP, para la semana de 15 al 19. Se tiene plenamente identificados los punto de integración con la Subcuenta Solidaridad y con el ERP según documento INTEGRACION SOLIDARIDAD.INGRESOS.doc dentro de las Especificaciones suplementarias / 19/09/2008: Pendiente reunión con el ERP y subcuentas para tratar temas de integración / 26/09/2008 Se realiza reunión con el equipo de Integracion ERP para aclarar temas preliminares / 10/10/2008 Pendiente oficializar Estructura requerida con destino ERP, Se realizan reuniones para aclarar los conceptos de ingresos, Se hacen cambios sustanciales al modelo de datos para Otros Ingresos / 17/10/2008 Se oficializa la Estructura requerida con destino ERP, Se realizan reuniones para aclarar los conceptos de ingresos, Se hacen cambios sustanciales al modelo de datos para Otros Ingresos.
- 48: 05/09/2008: Está pendiente aclarar el modo de autenticación de los terceros para el recaudo del formato fosyga 07 Sanciones Impuestas por la Superintendencia de Salud. / 12/09/2008: Para la semana del 15 al 19 Diana Amaya hará la inducción necesaria acerca del Modelos de Seguridad. / 19/09/2008: Se recibe inducción del SGS, está pendiente diligenciar la matriz de Usuarios y Roles / 10/10/2008: Preparación matriz de Acceso de usuarios, Configuración de Roles con las sugerencias del líder técnico (Web), está pendiente confirmar aprobación de esta matriz

| ID | WBS | Task | Duration | Start | Finish | Predecessors | Complete | Remaining | Baseline start | Baseline finish | Baseline duration | Total slack | Free slack | Resources | Work | Actual work |
| --- | --- | --- | --- | --- | --- | --- | --- | --- | --- | --- | --- | --- | --- | --- | --- | --- |
| 52 | 1.2.5 | **Pruebas** | 3.2d | 2008-09-18 10:48 A | 2008-09-24 10:48 |  | 38% | 1.99d | 2008-09-19 16:48 | 2008-09-25 16:48 | 3.2d | 43.72d |  |  | 43.6h | 15.08h |
| 53 | 1.2.5.1 | Definir detalles y enfoque de las pruebas | 4h | 2008-09-19 16:48 A | 2008-09-22 10:48 | 49 | 85% | 0.6h | 2008-09-19 16:48 | 2008-09-23 16:48 | 16h | 1.52d | 1.2d | Analista [20%]; Arquitecto [90%]; Tester Implementador [5%]; DBA [5%] | 4.8h | 4.08h |
| 54 | 1.2.5.2 | Definir necesidades de valoración y rastreabilidad | 4h | 2008-09-23 16:48 A | 2008-09-24 10:48 | 53 | 80% | 0.8h | 2008-09-23 16:48 | 2008-09-25 16:48 | 16h | 43.72d |  | Analista [20%]; Arquitecto [90%]; Tester Implementador [20%]; DBA [5%] | 5.4h | 4.32h |
| 55 | 1.2.5.3 | Revisión del Plan de pruebas SGC | 4h | 2008-09-18 10:48 A | 2008-09-18 16:48 | 49 | 20% | 3.2h | 2008-09-19 16:48 | 2008-09-22 10:48 | 4h | 0.32d | 0d | Analista [50%]; Arquitecto [50%]; Tester Implementador [50%]; Gerente Proyectos [5%] | 6.2h | 1.23h |
| 56 | 1.2.5.4 | Pruebas de la configuración | 16h | 2008-09-18 16:48 A | 2008-09-22 16:48 | 55 | 20% | 12.8h | 2008-09-22 10:48 | 2008-09-24 10:48 | 16h | 44.92d |  | Analista [80%]; Tester Implementador [80%]; DBA [10%] | 27.2h | 5.43h |
| 57 | 1.2.6 | **Despliegue** | 4.2d | 2008-09-12 12:48 A | 2008-09-19 16:48 |  | 58% | 1.77d | 2008-09-16 16:48 | 2008-09-25 12:48 | 5.4d | 45.72d |  |  | 24.4h | 14.8h |
| 58 | 1.2.6.1 | Definir Modelo de despliegue Hardware y Software | 4h | 2008-09-18 10:48 A | 2008-09-18 16:48 A | 49 | 100% |  | 2008-09-19 16:48 | 2008-09-22 10:48 | 4h |  |  | Analista [10%]; Arquitecto [90%]; DBA [10%]; Tester Implementador [10%]; Desarrollador Senior [10%] | 5.2h | 5.2h |
| 59 | 1.2.6.2 | Perfeccionar Plan despliegue | 2h | 2008-09-18 16:48 A | 2008-09-18 18:48 | 58 | 80% | 0.4h | 2008-09-22 10:48 | 2008-09-22 12:48 | 2h | 0.48d | 0d | Analista [20%]; Arquitecto [80%]; Desarrollador Senior [5%]; Tester Implementador [10%]; DBA [5%] | 2.4h | 1.92h |
| 60 | 1.2.6.3 | Ejecución Plan despliegue | 6h | 2008-09-18 18:48 A | 2008-09-19 16:48 | 59 | 80% | 1.2h | 2008-09-22 12:48 | 2008-09-25 12:48 | 24h | 45.72d |  | Analista [10%]; Arquitecto [90%]; Tester Implementador [50%]; DBA [10%] | 9.6h | 7.68h |
| 61 | 1.2.6.4 | Crear material gráfico y documentos del producto (doc) | 6h | 2008-09-12 12:48 | 2008-09-15 10:48 | 44 |  |  | 2008-09-16 16:48 | 2008-09-19 16:48 | 24h | 49.32d |  | Arquitecto [10%]; Desarrollador Senior [5%]; Tester Implementador [5%]; Documentador | 7.2h |  |
| 62 | 1.2.7 | **Gestión de cambios** | 7.48d | 2008-09-01 09:00 A | 2008-09-12 11:48 A |  | 100% |  | 2008-09-01 09:00 | 2008-09-12 16:48 | 7.78d |  |  |  | 6.4h | 6.4h |
| 63 | 1.2.7.1 | Definir espacios de trabajo de integración | 4h | 2008-09-01 09:00 A | 2008-09-01 13:00 A | 39 | 100% |  | 2008-09-01 09:00 | 2008-09-01 13:00 | 4h |  |  | Arquitecto [10%]; DBA [5%]; Gerente Proyectos [20%]; Tester Implementador [5%] | 1.6h | 1.6h |
| 64 | 1.2.7.2 | Revisar solicitudes de cambio Lider Funcional Subcuenta | 4h | 2008-09-11 17:48 A | 2008-09-12 11:48 A | 40 | 100% |  | 2008-09-12 10:48 | 2008-09-12 16:48 | 4h |  |  | Arquitecto [80%]; Lider Funcional Subcuenta [30%]; Gerente Proyectos [5%]; Director Subcuenta [5%] | 4.8h | 4.8h |
| 65 | 1.2.8 | **Entorno** | 0.4d | 2008-09-19 16:48 A | 2008-09-22 10:48 A |  | 100% |  | 2008-09-25 12:48 | 2008-09-25 18:48 | 0.4d |  |  |  | 3.6h | 3.6h |
| 66 | 1.2.8.1 | Configuración y Verificación de herramientas Hardware y Software | 4h | 2008-09-19 16:48 A | 2008-09-22 10:48 A | 57 | 100% |  | 2008-09-25 12:48 | 2008-09-25 18:48 | 4h |  |  | Arquitecto [20%]; Tester Implementador [50%]; DBA [20%] | 3.6h | 3.6h |
| 67 | 1.3 | **FASE DE CONSTRUCCIÓN** | 46.52d | 2008-09-05 16:48 A | 2008-12-01 18:00 |  | 13% | 40.3d | 2008-09-05 16:48 | 2009-02-06 18:00 | 84.12d | 0d |  |  | 1934.72h | 283.8h |
| 68 | 1.3.1 | **Modelado Empresarial** | 1d | 2008-09-09 16:48 A | 2008-09-10 18:48 |  | 50% | 0.5d | 2008-09-09 16:48 | 2008-09-17 11:48 | 4.5d | 43.92d |  |  | 9.25h | 4.5h |
| 69 | 1.3.1.1 | Aplicación de la prueba de concepto de la Arquitectura | 5h | 2008-09-09 16:48 A | 2008-09-10 11:48 A | 14 | 100% |  | 2008-09-09 16:48 | 2008-09-12 17:48 | 25h |  |  | Analista [10%]; Arquitecto [50%]; Desarrollador Senior [30%] | 4.5h | 4.5h |
| 70 | 1.3.1.2 | Asgurar las dependencias SII Subcuentas | 5h | 2008-09-10 11:48 | 2008-09-10 18:48 | 69 |  |  | 2008-09-12 17:48 | 2008-09-17 11:48 | 20h | 43.92d |  | Arquitecto [50%]; Desarrollador Senior [40%]; Gerente Proyectos [5%] | 4.75h |  |
| 71 | 1.3.2 | **Requisitos** | 0.4d | 2008-09-12 12:48 A | 2008-09-12 18:48 |  | 98% | 0.01d | 2008-09-16 16:48 | 2008-09-18 16:48 | 1.6d | 42.32d |  |  | 7.2h | 7.02h |
| 72 | 1.3.2.1 | Afinamiento Modelo de servicios | 4h | 2008-09-12 12:48 A | 2008-09-12 18:48 | 44 | 95% | 0.2h | 2008-09-16 16:48 | 2008-09-18 16:48 | 16h | 42.32d |  | Analista [30%]; Arquitecto [50%]; Desarrollador Senior [10%]; DBA [5%] | 3.8h | 3.62h |
| 73 | 1.3.2.2 | Afinamiento Especificaciones Suplementarias | 2h | 2008-09-12 12:48 A | 2008-09-12 16:48 A | 44 | 100% |  | 2008-09-16 16:48 | 2008-09-17 16:48 | 8h |  |  | Analista [30%]; Arquitecto [40%]; Desarrollador Senior [10%]; DBA [5%]; Lider Funcional Subcuenta [10%] | 1.9h | 1.9h |
| 74 | 1.3.2.3 | Afinamiento Casos de Uso | 2h | 2008-09-12 12:48 A | 2008-09-12 16:48 A | 44 | 100% |  | 2008-09-16 16:48 | 2008-09-17 16:48 | 8h |  |  | Analista [30%]; Arquitecto [30%]; Desarrollador Junior [10%]; Lider Funcional Subcuenta [5%] | 1.5h | 1.5h |
| 75 | 1.3.3 | **Análisis y Diseño** | 0.6d | 2008-09-12 18:48 A | 2008-09-15 16:48 |  | 97% | 0.02d | 2008-09-18 16:48 | 2008-09-23 10:48 | 2d | 41.72d |  |  | 6.8h | 6.58h |
| 76 | 1.3.3.1 | Afinamiento la arquitectura de tiempo de ejecución | 2h | 2008-09-12 18:48 A | 2008-09-15 10:48 A | 71 | 100% |  | 2008-09-18 16:48 | 2008-09-19 16:48 | 8h |  |  | Analista [30%]; Arquitecto [50%]; Desarrollador Senior [20%]; Tester Implementador [10%]; DBA [5%] | 2.3h | 2.3h |
| 77 | 1.3.3.2 | Afinamiento Modelos de Diseño | 2h | 2008-09-15 10:48 A | 2008-09-15 12:48 | 76 | 95% | 0.1h | 2008-09-19 16:48 | 2008-09-22 16:48 | 8h | 0.19d | 0d | Analista [30%]; Arquitecto [50%]; Desarrollador Senior [20%]; DBA [5%]; Tester Implementador [5%] | 2.2h | 2.08h |
| 78 | 1.3.3.3 | Afinamiento Modelo de servicios | 2h | 2008-09-15 12:48 A | 2008-09-15 16:48 | 77 | 95% | 0.1h | 2008-09-22 16:48 | 2008-09-23 10:48 | 4h | 41.72d |  | Analista [30%]; Arquitecto [50%]; Desarrollador Senior [20%]; Tester Implementador [10%]; DBA [5%] | 2.3h | 2.18h |

Notes:
- 53: 19/09/2008: Está pendiente diligenciar el formato de Plan de pruebas con acompañamiento de la líider técnico del SGC / 10/10/2008: Se hace la publicación en ambiente de prueba. Se presentaron algunos inconvenientes en la publicación, pero fueron resueltos el día 09/ de Oct 3:30Pm. Los ingenieros del SGC hacen sus pruebas. (Servidor Web Temporal), está pendiente recibir del SGC informe de incidencias / 17/10/2008 Se recibe del SGC informe de incidencias. El Líder de la subcuenta Solidaridad está probando el módulo de Administración, está pendiente recibir su reporte de incidencias.
- 55: 19/09/2008: Está pendiente diligenciar el formato de Plan de pruebas con acompañamiento de la líider técnico del SGC / 10/10/2008 Los ingenieros del SGC hacen sus pruebas. (Servidor Web Temporal), está pendiente recibir del SGC informe de incidencias / 10/10/2008: Los ingenieros del SGC hacen sus pruebas. (Servidor Web Temporal), está pendiente recibir del SGC informe de incidencias / 17/10/2008 Se recibe del SGC informe de incidencias. El Líder de la subcuenta Solidaridad está probando el módulo de Administración, está pendiente recibir su reporte de incidencias.
- 56: 19/09/2008: Está pendiente diligenciar el formato de Plan de pruebas con acompañamiento de la líider técnico del SGC / 10/10/2008: Los ingenieros del SGC hacen sus pruebas. (Servidor Web Temporal), está pendiente recibir del SGC informe de incidencias / 17/10/2008 Se recibe del SGC informe de incidencias. El Líder de la subcuenta Solidaridad está probando el módulo de Administración, está pendiente recibir su reporte de incidencias.
- 58: 12/09/2008:Se tiene el Modelo de despliegue de inraestructura y se han identificado los componentes de hardware y software que harán parte de la solución. Se tiene planeado para el 19/09/2008 hacer la primera publicación en el sitio de pruebas, con las capturas de tablas básicas, parámetros y tablas de referencia. / 19/09/2008: Se terminan las actividades de preparación del ambiente de desarrollo local VSS, DBML y LINQ, debidamente probados y en operación normal
- 59: 12/09/2008:Se tiene el Modelo de despliegue de inraestructura y se han identificado los componentes de hardware y software que harán parte de la solución. Se tiene planeado para el 19/09/2008 hacer la primera publicación en el sitio de pruebas, con las capturas de tablas básicas, parámetros y tablas de referencia. / 19/09/2008: Se instala el esquema de bases de datos en el servidor de pruebas y desarrollo, una vez validado con el DBA (el esquema es aprobado). Está pendiente la instalación en el web server.
- 60: 12/09/2008:Se tiene el Modelo de despliegue de inraestructura y se han identificado los componentes de hardware y software que harán parte de la solución. Se tiene planeado para el 19/09/2008 hacer la primera publicación en el sitio de pruebas, con las capturas de tablas básicas, parámetros y tablas de referencia. / 19/09/2008: Se instala el esquema de bases de datos en el servidor de pruebas y desarrollo, una vez validado con el DBA (el esquema es aprobado). Está pendiente la instalación en el web server. / 10/10/2008: Está pendiente Web Server. Publicación Web Server de Pruebas (Se envía solicitud el 29 Sep 2008 se devuelve la solicitud de cambios por que el nombre del proyecto no está oficializado, se reenvía el 08 Oct 2008)
- 64: 12/09/2008: Ya fueron aprobados los casos de uso, las reglas de negocio, está pendiente los cambios en los diseños de consultas y reportes / 19/09/2008: Se revisa los diseños de reporte Con el Líder Funcional, Queda pendiente que haga entrega formal de estos diseños.Está pendiente los diseños de Consulta / 26/09/2008: Hoy se vence el plazo para recepción de sugerencias. Los cambios que lleguen despues de esta fecha se harán mediante control de cambios. / 03/10/2008: Se encuentra en estudio Técnico las reglas de negocio que apoyan los diseños de reporte y copnsultas
- 69: 12/09/2008: Se tiene pleno dominio de la arquitectura, y se ha probado con el inicio de las actividades de desarrollo para la capa de presentación en lo que respecta a las tablas básicas, parámetros y referencias.
- 72: 12/09/2008: Se planea una reunión con la integración con ERP, para la semana de 15 al 19. Se tiene plenamente identificados los punto de integración con la Subcuenta Solidaridad y con el ERP según documento INTEGRACION SOLIDARIDAD.INGRESOS.doc dentro de las Especificaciones suplementarias / 19/09/2008: Pendiente reunion integracion ERP y Subcuentas / 10/10/2008: Pendiente oficializar Estructura requerida con destino ERP, Se realizan reuniones para aclarar los conceptos de ingresos, Se hacen cambios sustanciales al modelo de datos para Otros Ingresos / 17/10/2008 Se oficializa la Estructura requerida con destino ERP, Se realizan reuniones para aclarar los conceptos de ingresos, Se hacen cambios sustanciales al modelo de datos para Otros Ingresos.
- 73: 12/09/2008: Cerradas las reglas de negocio, especificado los detalles de acceso datos e identificados los controles para la interfaz gráfica, los requisitos documentados en las Especififacaciones suplementarias se encuentra finiquitados
- 74: 12/09/2008: Cerradas las reglas de negocio, los casos de uso del 01- 11 de reportes - consultas, especificado los detalles de acceso datos, identificados los controles para la interfaz gráfica; el afinamiento de los casos de uso se encuentra finiquitados
- 77: 12/09/2008: Se finaliza el afinamiento de los modelos de diseño para la capa de presentación y queda pendiente tener en cuenta los modelos de disño de reportes y consultas, los cuales se esperan terminar en la semana del 15 al 19 / 19/09/2008: El Lider Funcional tiene pendiente la entraga formal, sin embargo se revisaron los diseños preliminares sin observaciones. Pendiente revisión por parte del Arquitecto / 10/10/2008 Pendiente oficializar Estructura requerida con destino ERP, Se realizan reuniones para aclarar los conceptos de ingresos, Se hacen cambios sustanciales al modelo de datos para Otros Ingresos / 17/10/2008 Se oficializa la Estructura requerida con destino ERP, Se realizan reuniones para aclarar los conceptos de ingresos, Se hacen cambios sustanciales al modelo de datos para Otros Ingresos.
- 78: 12/09/2008: Se planea una reunión con la integración con ERP, para la semana de 15 al 19. Se tiene plenamente identificados los punto de integración con la Subcuenta Solidaridad y con el ERP según documento INTEGRACION SOLIDARIDAD.INGRESOS.doc dentro de las Especificaciones suplementarias / 19/09/2008: Pendiente reunión con Integracion ERP y subcuentas para fijar mecanismos de interacción / 10/10/2008: Pendiente oficializar Estructura requerida con destino ERP, Se realizan reuniones para aclarar los conceptos de ingresos, Se hacen cambios sustanciales al modelo de datos para Otros Ingresos / 17/10/2008 Se oficializa la Estructura requerida con destino ERP, Se realizan reuniones para aclarar los conceptos de ingresos, Se hacen cambios sustanciales al modelo de datos para Otros Ingresos.

| ID | WBS | Task | Type | Duration | Start | Finish | Predecessors | Complete | Remaining | Baseline start | Baseline finish | Baseline duration | Total slack | Free slack | Resources | Work | Actual work |
| --- | --- | --- | --- | --- | --- | --- | --- | --- | --- | --- | --- | --- | --- | --- | --- | --- | --- |
| 79 | 1.3.4 | **Implementacion** |  | 33.82d | 2008-09-15 16:48 A | 2008-11-14 19:00 |  | 12% | 29.62d | 2008-09-15 16:48 | 2009-01-09 19:00 | 63.42d | 0.02d | 0d |  | 1409.32h | 223.53h |
| 80 | 1.3.4.1 | Implementar Componentes de diseño |  | 338.2h | 2008-09-15 16:48 A | 2008-11-14 19:00 | 24 | 15% | 287.47h | 2008-09-15 16:48 | 2009-01-09 19:00 | 634.2h | 0.02d | 0d | Desarrollador Senior; Desarrollador Junior; Arquitecto; DBA [20%]; Tester Implementador [5%]; Desarrollador Junior 2 | 1143.63h | 209.37h |
| 81 | 1.3.4.2 | Ejecutar Reportar pruebas (unitarias) de desarrollador |  | 38.4h | 2008-10-15 17:54 A | 2008-11-12 16:18 | 80SS+5% | 15% | 32.64h | 2008-11-12 11:54 | 2008-12-11 10:18 | 38.4h | 1.89d |  | Desarrollador Junior; Desarrollador Senior; Tester Implementador [10%]; DBA [10%] | 84.48h | 12.67h |
| 82 | 1.3.4.3 | Desarrollo de componentes de integración SII |  | 10h | 2008-10-15 17:54 A | 2008-10-17 09:54 | 80SS+5% | 5% | 9.5h | 2008-11-12 11:54 | 2008-11-26 16:54 | 75h | 15.93d |  | Desarrollador Senior; Desarrollador Junior [80%]; Arquitecto [10%]; DBA [10%]; Desarrollador Junior 2 | 30h | 1.5h |
| 83 | 1.3.4.4 | Documentar elementos de desarrollo |  | 48h | 2008-09-19 18:37 | 2008-11-07 16:24 | 80SS+1% |  |  | 2008-09-25 16:13 | 2008-11-25 16:13 | 48h | 4.28d |  | Desarrollador Junior; Desarrollador Senior [80%]; DBA [5%]; Documentador [10%]; Analista [5%] | 96h |  |
| 84 | 1.3.4.5 | Unidades de Despliegue |  | 24h | 2008-11-12 09:00 | 2008-11-14 19:00 | 80FF |  |  | 2009-01-07 09:00 | 2009-01-09 19:00 | 24h | 0.02d | 0d | Arquitecto [10%]; Analista [5%]; Desarrollador Junior [50%]; Desarrollador Senior; DBA [5%]; Tester Implementador [60%] | 55.2h |  |
| 85 | 1.3.5 | **Pruebas** |  | 7.9d | 2008-11-18 09:00 A | 2008-12-01 18:00 |  | 2% | 7.77d | 2009-01-12 09:00 | 2009-02-06 18:00 | 15.9d | 0d |  |  | 221.93h | 2.88h |
| 86 | 1.3.5.1 | Pruebas de unidades de despliegue |  | 4h | 2008-11-18 09:00 A | 2008-11-18 13:00 | 79 | 5% | 3.8h | 2009-01-12 09:00 | 2009-01-12 13:00 | 4h | 0.09d | 0d | Tester Implementador; Desarrollador Junior [80%]; Desarrollador Senior; DBA [10%]; Analista [10%] | 12h | 0.6h |
| 87 | 1.3.5.2 | Ejecución de las pruebas SGC |  | 17h | 2008-11-18 15:00 A | 2008-11-20 16:00 | 86 | 5% | 16.15h | 2009-01-12 15:00 | 2009-01-14 16:00 | 17h | 0.04d | 0d | Analista [20%]; Desarrollador Senior [30%]; Tester Implementador; Desarrollador Junior [10%]; DBA [10%] | 28.9h | 1.45h |
| 88 | 1.3.5.3 | Ejecutar pruebas de Funcionalidad |  | 8h | 2008-11-20 16:00 A | 2008-11-21 16:00 | 87 | 5% | 7.6h | 2009-01-14 16:00 | 2009-01-15 16:00 | 8h | 0d |  | Analista [20%]; Desarrollador Junior [30%]; Desarrollador Senior [50%]; Tester Implementador; DBA [10%] | 16.8h | 0.83h |
| 89 | 1.3.5.4 | Ejecutar pruebas de Integración SII |  | 8h | 2008-11-21 16:00 | 2008-11-24 16:00 | 88 |  |  | 2009-01-15 16:00 | 2009-01-16 16:00 | 8h | 0d |  | Analista [10%]; Arquitecto [10%]; Desarrollador Junior [20%]; Desarrollador Senior [50%]; Tester Implementador; DBA [10%] | 16h |  |
| 90 | 1.3.5.5 | Ejecutar pruebas de Seguridad |  | 4h | 2008-11-24 16:00 | 2008-11-25 10:00 | 89 |  |  | 2009-01-16 16:00 | 2009-01-19 10:00 | 4h | 0d |  | Arquitecto [10%]; Analista [5%]; Desarrollador Junior [10%]; Desarrollador Senior [50%]; Tester Implementador; DBA [20%] | 7.8h |  |
| 91 | 1.3.5.6 | Determinar resultados pruebas |  | 4h | 2008-11-25 10:00 | 2008-11-25 16:00 | 90 |  |  | 2009-01-19 10:00 | 2009-01-19 16:00 | 4h | 0d |  | Analista [10%]; Arquitecto [5%]; Desarrollador Junior [50%]; Desarrollador Senior [80%]; DBA [10%]; Tester Implementador | 10.2h |  |
| 92 | 1.3.5.7 | Analizar las anomalías en la prueba |  | 24h | 2008-11-25 16:00 | 2008-11-28 16:00 | 91 |  |  | 2009-01-19 16:00 | 2009-01-22 16:00 | 24h | 0d |  | Analista [20%]; Arquitecto [10%]; Desarrollador Junior [50%]; Desarrollador Senior [60%]; Tester Implementador; DBA [10%] | 60h |  |
| 93 | 1.3.5.8 | Valorar y mejorar el esfuerzo de prueba: Soporte a desarrollo |  | 16h | 2008-11-27 10:00 | 2008-12-01 10:00 | 92SS+5% |  |  | 2009-01-21 10:00 | 2009-02-06 10:00 | 96h | 0d |  | Arquitecto [10%]; Desarrollador Junior; Desarrollador Senior; Tester Implementador; DBA [5%]; Desarrollador Junior 2 | 56.85h |  |
| 94 | 1.3.5.9 | Pruebas Aceptación Consorcio |  | 4h | 2008-12-01 10:00 | 2008-12-01 16:00 | 93 |  |  | 2009-02-06 10:00 | 2009-02-06 16:00 | 4h | 0d |  | Analista [10%]; Arquitecto [30%]; Tester Implementador; DBA [10%]; Lider Funcional Subcuenta; Gerente Proyectos [5%]; Director Subcuenta [5%] | 10.4h |  |
| 95 | 1.3.5.10 | Verificar Criterios de Aceptación | milestone | 2h | 2008-12-01 16:00 | 2008-12-01 18:00 | 94 |  |  | 2009-02-06 16:00 | 2009-02-06 18:00 | 2h | 0d |  | Arquitecto [10%]; Tester Implementador; Lider Funcional Subcuenta [30%]; DBA [5%]; Director Subcuenta [2%]; Gerente Proyectos [2%] | 2.98h |  |
| 96 | 1.3.6 | **Despliegue** |  | 6.67d | 2008-11-04 18:30 | 2008-11-18 11:10 |  |  |  | 2008-12-24 10:54 | 2009-01-06 15:34 | 6.67d | 5.18d | 0d |  | 87h |  |
| 97 | 1.3.6.1 | Desarrollar documentos y materiales de formación (Doc) |  | 30.67h | 2008-11-04 18:30 | 2008-11-10 17:10 | 79FF-1% |  |  | 2008-12-24 10:54 | 2008-12-31 09:34 | 30.67h | 5.18d | 0d | Analista [10%]; Arquitecto [5%]; Documentador; Desarrollador Junior [5%] | 36.8h |  |
| 98 | 1.3.6.2 | Desarrollar documentos y materiales de soporte (Doc) |  | 24h | 2008-11-10 17:10 | 2008-11-13 17:10 | 97 |  |  | 2008-12-31 09:34 | 2009-01-05 09:34 | 24h | 5.18d | 0d | Analista [10%]; Arquitecto [5%]; Documentador; Desarrollador Junior [10%]; Desarrollador Senior [5%]; DBA [5%] | 32.4h |  |
| 99 | 1.3.6.3 | Desarrollar Documenttación y productos de trabajo de instalación (Doc) |  | 8h | 2008-11-13 17:10 | 2008-11-14 17:10 | 98 |  |  | 2009-01-05 09:34 | 2009-01-06 09:34 | 8h | 5.18d | 0d | Analista [10%]; Arquitecto [5%]; Desarrollador Junior [10%]; Desarrollador Senior [5%]; Tester Implementador [20%]; DBA [5%]; Documentador | 12.4h |  |
| 100 | 1.3.6.4 | Escribir Documentación y notas del release (Doc) |  | 4h | 2008-11-14 17:10 | 2008-11-18 11:10 | 99 |  |  | 2009-01-06 09:34 | 2009-01-06 15:34 | 4h | 5.18d |  | Analista [5%]; Desarrollador Junior [10%]; Desarrollador Senior [5%]; DBA [5%]; Documentador; Tester Implementador [10%] | 5.4h |  |
| 101 | 1.3.7 | **Gestión de cambios** |  | 34.42d | 2008-09-15 16:48 A | 2008-11-18 17:00 |  | 17% | 28.68d | 2008-09-15 16:48 | 2009-01-12 17:00 | 64.02d | 7.3d |  |  | 9.27h | 1.23h |
| 102 | 1.3.7.1 | Crear espacios de trabajo de desarrollo |  | 2h | 2008-09-15 16:48 A | 2008-09-15 18:48 A | 80SS | 100% |  | 2008-09-15 16:48 | 2008-09-15 18:48 | 2h |  |  | Arquitecto [5%]; Desarrollador Senior [5%]; DBA [2%]; Gerente Proyectos [50%] | 1.23h | 1.23h |
| 103 | 1.3.7.2 | Empaquetado de componentes (Unidades de despligue) |  | 2h | 2008-11-18 09:00 | 2008-11-18 11:00 | 79 |  |  | 2009-01-12 09:00 | 2009-01-12 11:00 | 2h | 7.5d | 0d | Arquitecto [5%]; Desarrollador Junior [10%]; Desarrollador Senior [5%]; Tester Implementador [20%]; DBA [5%] | 0.9h |  |
| 104 | 1.3.7.3 | Realizar la auditoría de configuración entrada a roducción |  | 2h | 2008-11-18 11:00 | 2008-11-18 13:00 | 103 |  |  | 2009-01-12 11:00 | 2009-01-12 13:00 | 2h | 7.5d |  | Arquitecto [10%]; Desarrollador Senior [50%]; Tester Implementador [40%]; DBA [20%]; Gerente Proyectos [5%]; Lider Funcional Subcuenta [1%] | 2.52h |  |
| 105 | 1.3.7.4 | Gestionar solicitudes de cambios |  | 2h | 2008-11-18 09:00 | 2008-11-18 11:00 | 86SS |  |  | 2009-01-12 09:00 | 2009-01-12 11:00 | 2h | 7.3d | 0d | Arquitecto [5%]; Tester Implementador [60%]; DBA [5%]; Gerente Proyectos [50%] | 2.4h |  |
| 106 | 1.3.7.5 | Verificar cambios en la compilación |  | 4h | 2008-11-18 11:00 | 2008-11-18 17:00 | 105 |  |  | 2009-01-12 11:00 | 2009-01-12 17:00 | 4h | 7.3d |  | Arquitecto [5%]; Desarrollador Senior [20%]; Tester Implementador [30%] | 2.2h |  |

Notes:
- 80: 10/09/2008: Se inicia el desarrollo de los componentes de diseño, teniendo en cuenta los estándares y la arquitectura / del 15/09/2008 al 19/08/2008: / Reunión con el lider de proyecto, para la explicación del proyecto Ingresos y Recaudos. / Modificación del proyecto para la creacion de la estructura en Sourcesafe. / Reunión de inducción de seguridad y estandares web e intranet. / Instalación de Sourcesafe en las maquinas de desarrollo asignadas para el proyecto. Creación de la estructura del proyecto en Sourcesafe. / Reunión con el lider de proyecto, para la revisión de los diágramas de modelado del sistema. / Creación de clases de arquitectura para el proyecto PCD_SII_INRE.Formulario / Creación de métodos para la consulta de las tablas de la base de datos. / Modificación de diagráma (DBML) generado por LINQ para reflejar cambios realizados por unificación de estandar en la base de datos. / Modificación de las clases del proyecto para reflejar cambios realizados por unificación de estandar en la base de datos. / Celebración de cumpleaños / Creación del proyecto web para el manejo de formularios. / ------------- / Consultas SQL utilizando la herramienta de LinQ / Inserción de datos a la base de datos INRE / Reunión para analizar formatos de Ingresos y Recaudos, además adecuación con los nuevos estándares de programación. / Consultas utilizando la herramienta de LinQ. / Instalación y configuración de Microsoft Visual Sourcesafe / Investigación de las posibles soluciones (internet, ayudas de Visual Studio). / Modificaciones en la Base de datos (Cambios en el script) / Modificaciones en la Base de datos (Cambios en el script) deacuerdo a los estandares de Base de Datos y la herramienta Linq, incluyendo los cambios en el código (.cs). / Opciones de soluciones para tratar las validaciones complementarias (Reunión del grupo) / Pruebas de los formularios de administración, ingresando información atravez de los formularios de Administración / Pruebas de validación de los campos en los formularios de administración, se requiere hacer algunas modficaciones en las validaciones de los campos. / Seguimiento del código implementado en el Módulo de Administración. / Uso del Módulo de Administración PCW_SII_Administracion. / Validación de la base de datos con los estándares de programación. / Validación de la implementación con el diseño, cambios requeridos. / ------------------------------------------------------------------------------------------------- / 26/09/2008 Componente Encabezado: Desarrolo de la página Encabezado (100%), aplicación de estilos (100%), validaciones a nivel de campo (80%), carga de configuración desde la BD SP_ (100%), Creación de proyectos capa de negocio (50%). Componente Consultas: Ejecución de consulta parametrica (100%), Carga y configuración de grillas (100%), Funcionalidades de Ordenamiento (100%), Aplicación de estilos (90%), Mecanismos de exportación (60%). Componente de Administración: Mantenimiento mejora continua (100%), Direccionamiento a la BD Servidor de pruebas (100%), Publicación local (100%), / Temas Pendientes: Revision y Pruebas de Usabilidad, Seguridad y Almacenamiento, Mecanismos de Filtrado y Busqueda. Publicación Web Server de Pruebas, / ------------------------------------------------------------------------------------------------- / 03/10/2008 / Componente de Administración:/ 1. Capacitación de la implementación de seguridad existente para el Módulo de Administración. / 2. Diligenciamiento del Formato "" Matriz de Control de Seguridad INRE - 29092008 "". / 3. Estudio del Modelo de Base de Datos (172.30.1.28SIIDESA, Base de Datos=WebIntranetDesa). Se creó la Base de Datos de seguridad localmente para realizar las pruebas unitarias. / 1. Verificación del correcto funcionamiento de los formularios de seguridad al momento de integrarlo. / a.Corrección en la validación de los campos con las expresiones regulares. / 2. Reunión para mostrar el estado actual del proyecto. / 3. Prebas de validación para el programa de seguridad con las expresiones regulares. / 4. Se escribión un documento con los pasos a seguir para la publicación de la aplicación / Componente de Consultas Filtros y Busquedas:/ 1.Se actualizó la Base de Datos local para realizar las pruebas unitarias. / 2. Cambio en el código de la validación con expresiones regulares. / a. Para obtener la expresión regular correspondiente al tipo de dato desde la tabla Parametro. / 3. Modificación en código par validar los campos de los formularios del programa seguridad. / Recorrido general de todos los formularios de Administración y Seguridad. / 2. Se planteó la validación de los tipo Fecha, la cual fue descartada porque no cumple con el objetivo del módulo, que debe ser genérico, y para esto se requiere un desarrollo personalizado. / 3. Escribir en un archivo las pruebas realizadas al módulo de Administración, incluye pruebas de validación de campos, publicación de la aplicación. / Creacion de un pdf para los reportes, de acuerdo al tipo de consulta que se genere / Generación de la consulta: por medio un procedimiento almacenado o vista con parámetros de entra o sin parámetros, con las respectivas validaciones de acuerdo al tipo de parámetro de entrada. / Se selecciona la opción generar, carga los parametros de busqueda del procedimiento almacenado o vista, un conjunto de campos por los cuales desea buscar la información que está relacionada con la consulta previamente elegida, podrá presionar clic sobre dicho botón aceptar para generar la consulta por pantalla, el sistema dispone de los mecanismos de exportación de las consultas, a formatos xls, txt, pdf y html, presionando clic sobre el botón exportar. / Se realizo el método de búsquedas en la consulta, cuando encuentra un registro o varios, se posiciona en la / gridview y le pone un color al registro encontrado / ------------------------------------------------------------------------------------------------- / 10/10/2008: / Componente de Administración: (100%) Se encuentra en pruebas / Cambio pendiente que se tenía en uno de los formularios para hacer la entrega oficial. / Publicación de la aplicación en el Edificio Fenix piso 11. / Reunión para informar los cambios realizados en la Base de Datos. / Actualización de la Base de Datos local, para realizar las pruebas, con ello realizar cambios en módulo de administración. / Entrega de documentación de las pruebas unitarias / Reunión para asignación de nuevas actividades. / Integración de los cambios realizados en PCW_SII_Administracion con el Módulo oficial para publicado / Integración del Módulo de administración oficial. / Actualización de la parametrización de las Tablas en Administración con la Base de Datos. / Publicación de la aplicación en el Edificio Fenix piso 11. / Componente de Consultas Filtros y Busquedas: (70%) / Se realizo el metodo de filtrado de las consultas, seleccionar o buscar un conjunto de campos por los cuales desea filtrar información que está relacionada con la consulta previamente elegida. / Una vez seleccionado el campo por el cual filtrará, se elegirá el operador relacional en la lista desplegable (Igual, contiene, diferente, mayor, menor, mayor igual, menor igual, entre otros), se digitara el valor del campo o de los campos que ha seleccionado para aplicar el filtro, cada criterio de filtrado estará relacionado mediante un operador lógico (and u or) que son mutuamente excluyentes, se prodra limpiar el contenido de la consulta, la operación de Otro campo para seleccionar otro criterio de filtrado, la operación de Cancelar para salir de la consulta. / se realizaron validaciones tipo de campo, longitud, tamaño gridview, paginacion de la grilla,.. Etc, para poder realizar las busquedadas o filtrados de la consulta. / Componente y Clases Capturador Master Page (61%) / Entrega y lectura de los Requermientos Caso de Uso inherente al trabajo sobre el 'Formulario': MasterPageFormularioEncabezado.Master / Respecto al 'Formulario' MasterPageFormularioEncabezado.Master: Se construyó una estructura GridView(Datatable) que permite trabajar en Memoria la inserción por parte del Cliente de los datos concermientes a: Cod.Banco, No.Cheque, Valor. / Se construyeron en la clase 'ControladorFormulario.cs' los siguientes métodos: 'EliminarDetalleCheques()', 'AgregarDetalleCheques()', 'ActualizarDetalleCheques()', 'VerificarExistenciaDupla()'. / Para poder satisfacer la captura del campo 'FechaCaptura' y 'FechaSistema' dentro del MasterPageFormularioEncabezado.Master se implementó un StoreProcedure que mediante la implementacuión del Método 'TraerFechaCapturaYSistema()' que viaja por capas para traer este dato específico. / Se está construyendo un Método que hace la labor de Validación de los datos diligenciados en MasterPageFormularioEncabezado.Master; esto con el fin de, al momento de registrar en las Bases de Datos respectivas, la información sea lo más fidedigna posible. / Se está mirando que tipo de control utilizar para los campos: 'Valores$' y 'Fechas'; se está trabajando en forma manual, pero es menester encontrar un proceso de enmascaramiento. / Se está trabajando un Método que permita Guardar los valores digitados en MasterPageFormularioEncabezado.Master; se verificó que afecta 3 tablas en la Base de Datos 'SII_INRE' que son: 'Formatos_Recaudos_Encabezado' + 'Consignaciones' + 'Detalle_Cheques' / Clases Formularios Fosyga Solidaridad (10%)/ Estudio de la estructura del Módulo PCD_SII_INRE.Formulario y PCW_SII_INRE.Formulario. / Estudio de requerimientos para implementar los formularios de Solidaridad. / Carga de la Grilla con los valores obtenidos del store procedure / Pruebas y búsqueda para que la grilla permita ser modificada con sus propios controles. / Se aplican los controles que permiten modificar la grilla. / Estudiar la formade guardar y actualizar los datos de la grilla por medio de Linq. / Implementar los cálculos de las cifras requeridas en el formulario. / ------------------------------------------------------------------------------------------------- / 17/10/2008 / Componente de Consultas Filtros y Busquedas: (100%) / Se termino el modulo de consultas: Metodo Buscar, metodo de filtrado, metodo de exportar consultas, con todas las validaciones correspondientes, aplicación de estilos, se Integro al modulo de formularios, en la MasterPage de Formularios que dice consultar para ingresar al modulo de consultas, donde cargara una grilla de acuerdo a los parametros que se le mande en la MasterPage. / Carga Masiva de Multas: (2%) / Se realizo el modelo de datos para el CARGUE DE ARCHIVO MULTAS SUPERSALUD, se crearon 3 tablas para el cargue del archivo: / Componente y Clases Capturador Master Page (90%) / Se incorporó un botón en la MasterPage que llama al Formulario consultas, para ello se afectó el web.config / Se construyó un Método que hace la labor de Validación de los datos diligenciados en MasterPageFormularioEncabezado.Master; esto con el fin de, al momento de registrar en las Bases de Datos respectivas, la información sea lo más fidedigna posible. / Se crearon Controles especializados para la Fecha y para los valores, esto es, el despliegue automatico de un calendario y la respectiva mascara para los controles de ingreso de valores decimal / Se creó, por el momento en la Clase ControladorFormulario una secuencia de instrucciones Linq que permite realizar la transacción de Inserción en las tres tablas Implicadas para el Encabezado del formulario. / -------------------------------------------------------------------------------------------------
- 81: 19/08/2008: Se está probando (puebs unitarias) el Modulo de Administración / 26/09/2008: Los desarrolladores están llenando formato Check List de Pruebas para luego consolidarlo en el formato propuesto por SGC.
- 82: 26/09/2008: Se encuentra en curso el desarrollo de funcionalidades para el cargue, configuración, y calculo dentro del foprmato Fosyga / 10/10/2008: Pendiente oficializar Estructura requerida con destino ERP, Se realizan reuniones para aclarar los conceptos de ingresos, Se hacen cambios sustanciales al modelo de datos para Otros Ingresos / 17/10/2008 Se oficializa la Estructura requerida con destino ERP, Se realizan reuniones para aclarar los conceptos de ingresos, Se hacen cambios sustanciales al modelo de datos para Otros Ingresos.
- 86: 10/10/2008: Los ingenieros del SGC hacen sus pruebas. (Servidor Web Temporal), está pendiente recibir del SGC informe de incidencias / 17/10/2008 Se recibe del SGC informe de incidencias. El Líder de la subcuenta Solidaridad está probando el módulo de Administración, está pendiente recibir su reporte de incidencias.
- 87: 10/10/2008: Los ingenieros del SGC hacen sus pruebas. (Servidor Web Temporal), está pendiente recibir del SGC informe de incidencias / 17/10/2008 Se recibe del SGC informe de incidencias. El Líder de la subcuenta Solidaridad está probando el módulo de Administración, está pendiente recibir su reporte de incidencias.
- 88: 10/10/2008: Los ingenieros del SGC hacen sus pruebas. (Servidor Web Temporal), está pendiente recibir del SGC informe de incidencias / 17/10/2008 Se recibe del SGC informe de incidencias. El Líder de la subcuenta Solidaridad está probando el módulo de Administración, está pendiente recibir su reporte de incidencias.
- 102: 26/09/2008 El equipo de desarrollo está completo, cada ingeniero posee las herramientas tecnológicas que necesita para iniciar las actividades de desarrollo. Está Pendiente acceso a internet.Está pendiente los recursos: Tester y Documentador. Sin embargo estos faltantes no interfieren en la generación de código fuente

| ID | WBS | Task | Duration | Start | Finish | Predecessors | Complete | Remaining | Baseline start | Baseline finish | Baseline duration | Total slack | Free slack | Constraint | Resources | Work | Actual work |
| --- | --- | --- | --- | --- | --- | --- | --- | --- | --- | --- | --- | --- | --- | --- | --- | --- | --- |
| 107 | 1.3.8 | **Entorno** | 41.34d | 2008-09-05 16:48 A | 2008-11-21 12:10 |  | 21% | 32.64d | 2008-09-05 16:48 | 2009-01-12 11:00 | 68.42d | 5.18d |  |  |  | 183.95h | 38.05h |
| 108 | 1.3.8.1 | Configuración e Implantación ambientes: Desarrollo y Pruebas. | 7h | 2008-09-05 16:48 A | 2008-09-08 15:48 | 80SS-48h | 90% | 0.7h | 2008-09-05 16:48 | 2008-09-08 15:48 | 7h | 45.82d |  |  | Arquitecto [5%]; Desarrollador Senior [50%]; Tester Implementador; DBA [30%] | 12.95h | 11.65h |
| 109 | 1.3.8.2 | Instalación producto | 2h | 2008-11-18 09:00 | 2008-11-18 11:00 | 84 |  |  | 2009-01-12 09:00 | 2009-01-12 11:00 | 2h | 7.7d |  |  | Arquitecto [5%]; Desarrollador Senior [80%]; DBA [30%]; Tester Implementador | 4.3h |  |
| 110 | 1.3.8.3 | Soporte a Desarrollo entrada a producción | 48h | 2008-11-07 09:00 | 2008-11-14 19:00 | 80FF |  |  | 2009-01-02 09:00 | 2009-01-09 19:00 | 48h | 7.9d |  |  | Arquitecto [10%]; Desarrollador Junior [60%]; Desarrollador Senior [80%]; Tester Implementador [10%]; DBA [10%] | 81.6h |  |
| 111 | 1.3.8.4 | Desarrollar la guía de estilo del manual de usuario (Doc) | 25h | 2008-11-18 11:10 | 2008-11-21 12:10 | 96 |  |  | 2009-01-06 15:34 | 2009-01-09 16:34 | 25h | 5.18d |  |  | Analista [10%]; Desarrollador Junior [60%]; Desarrollador Senior [20%]; Documentador | 47.5h |  |
| 112 | 1.3.8.5 | Personalizar el proceso de desarrollo (Componentes GUI) | 16h | 2008-09-15 16:48 A | 2008-09-17 16:48 A | 80SS | 100% |  | 2008-09-15 16:48 | 2008-09-17 16:48 | 16h |  |  |  | Analista [10%]; Desarrollador Senior [80%]; Desarrollador Junior [30%]; Tester Implementador [40%]; DBA [5%] | 26.4h | 26.4h |
| 113 | 1.3.8.6 | Preparar y Configurar plantillas para interfaz WEB | 8h | 2008-09-17 16:48 | 2008-09-18 16:48 | 112 |  |  | 2008-09-17 16:48 | 2008-09-18 16:48 | 8h | 39.32d |  |  | Analista [10%]; Desarrollador Junior [30%]; Desarrollador Senior [40%]; Tester Implementador [60%] | 11.2h |  |
| 114 | 1.4 | **FASE DE TRANSICIÓN** | 3.2d | 2008-12-01 18:00 | 2008-12-05 18:00 | 67 |  |  | 2009-02-06 18:00 | 2009-02-20 12:00 | 7.6d | 0d |  |  |  | 157h |  |
| 115 | 1.4.1 | **Gestión del Proyecto** | 0.8d | 2008-12-01 18:00 | 2008-12-02 18:00 |  |  |  | 2009-02-06 18:00 | 2009-02-12 18:00 | 3.2d | 6.4d | 0d |  |  | 20.37h |  |
| 116 | 1.4.1.1 | Control y seguimiento del proyecto | 8h | 2008-12-01 18:00 | 2008-12-02 18:00 |  |  |  | 2009-02-06 18:00 | 2009-02-12 18:00 | 32h | 6.4d |  |  | Gerente Proyectos; Arquitecto [40%]; Analista [10%]; Desarrollador Senior [20%]; DBA [10%]; Tester Implementador [5%]; Documentador [2%] | 14.97h |  |
| 117 | 1.4.1.2 | Evaluación de Entregables | 4h | 2008-12-01 18:00 | 2008-12-02 12:00 |  |  |  | 2009-02-06 18:00 | 2009-02-10 18:00 | 16h | 6.8d |  |  | Gerente Proyectos; Arquitecto [10%]; Analista [5%]; Desarrollador Senior [5%]; Tester Implementador [5%]; DBA [5%]; Documentador [5%] | 5.4h |  |
| 118 | 1.4.2 | **Requisitos** | 0.6d | 2008-12-02 18:00 | 2008-12-03 16:00 | 122 |  |  | 2009-02-09 18:00 | 2009-02-12 19:00 | 2.5d | 5.8d |  |  |  | 12.9h |  |
| 119 | 1.4.2.1 | Revisar Requerimientos (Acompañamiento a Pruebas de Aceptación) | 6h | 2008-12-02 18:00 | 2008-12-03 16:00 |  |  |  | 2009-02-09 18:00 | 2009-02-12 19:00 | 25h | 5.8d |  |  | Arquitecto [60%]; Desarrollador Senior [10%]; DBA [10%]; Tester Implementador [80%]; Lider Funcional Subcuenta [50%]; Gerente Proyectos [5%] | 12.9h |  |
| 120 | 1.4.3 | **Implementacion** | 1.6d | 2008-12-02 18:00 | 2008-12-04 18:00 | 122 |  |  | 2009-02-09 18:00 | 2009-02-19 12:00 | 6d | 0d |  |  |  | 46.4h |  |
| 121 | 1.4.3.1 | Corrección de Incidencias | 16h | 2008-12-02 18:00 | 2008-12-04 18:00 |  |  |  | 2009-02-09 18:00 | 2009-02-19 12:00 | 60h | 0d |  |  | Arquitecto [20%]; Desarrollador Senior [80%]; DBA [10%]; Tester Implementador [80%]; Desarrollador Junior | 46.4h |  |
| 122 | 1.4.4 | **Pruebas** | 0.8d | 2008-12-01 18:00 | 2008-12-02 18:00 | 115SS |  |  | 2009-02-06 18:00 | 2009-02-09 18:00 | 0.8d | 0d |  |  |  | 15.52h |  |
| 123 | 1.4.4.1 | Entregar a Pruebas (Aceptación) | 8h | 2008-12-01 18:00 | 2008-12-02 18:00 |  |  |  | 2009-02-06 18:00 | 2009-02-09 18:00 | 8h | 0d |  |  | Desarrollador Senior [80%]; Tester Implementador; DBA [10%]; Gerente Proyectos [2%]; Arquitecto [2%] | 15.52h |  |
| 124 | 1.4.5 | **Despliegue** | 2.4d | 2008-12-02 18:00 | 2008-12-05 18:00 | 122 |  |  | 2009-02-09 18:00 | 2009-02-20 12:00 | 6.8d | 0d |  |  |  | 41.32h |  |
| 125 | 1.4.5.1 | Ejecutan Plan de Capacitación | 20h | 2008-12-02 18:00 | 2008-12-05 12:00 |  |  |  | 2009-02-09 18:00 | 2009-02-12 12:00 | 20h | 0.4d |  |  | Analista [80%]; Tester Implementador [2%]; Documentador [10%] | 18.4h |  |
| 126 | 1.4.5.2 | Verificar Criterios de Aceptación | 6h | 2008-12-04 18:00 | 2008-12-05 16:00 | 120 |  |  | 2009-02-19 12:00 | 2009-02-20 10:00 | 6h | 0d |  |  | Arquitecto [60%]; Desarrollador Senior [10%]; Gerente Proyectos; Lider Funcional Subcuenta [10%]; DBA [2%] | 10.92h |  |
| 127 | 1.4.5.3 | Ejecutar Plan de Despliegue - Producción | 8h | 2008-12-04 18:00 | 2008-12-05 18:00 | 126SS |  |  | 2009-02-19 12:00 | 2009-02-20 12:00 | 8h | 0d |  |  | Arquitecto [30%]; Desarrollador Senior [40%]; DBA [40%]; Tester Implementador [40%] | 12h |  |
| 128 | 1.4.6 | **Entorno** | 1d | 2008-12-02 18:00 | 2008-12-04 10:00 | 122 |  |  | 2009-02-09 18:00 | 2009-02-13 16:00 | 3d | 5.4d |  |  |  | 20.5h |  |
| 129 | 1.4.6.1 | Documentar de Artefactos (Incidencias) | 10h | 2008-12-02 18:00 | 2008-12-04 10:00 |  |  |  | 2009-02-09 18:00 | 2009-02-13 16:00 | 30h | 5.4d |  |  | Analista [30%]; Arquitecto [10%]; Desarrollador Junior [5%]; Desarrollador Senior [5%]; DBA [5%]; Tester Implementador [50%]; Documentador | 20.5h |  |
| 130 | 1.5 | **Gestión del Proyecto** | 68.4d | 2008-07-25 09:00 A | 2008-11-28 13:00 |  | 32% | 46.8d | 2008-07-25 09:00 | 2009-01-30 13:00 | 102.8d | 8.3d |  |  |  |  |  |
| 131 | 1.5.1 | **Control y seguimiento al Proyecto Evaluación de Entregables** | 68.4d | 2008-07-25 09:00 A | 2008-11-28 13:00 |  | 32% | 46.8d | 2008-07-25 09:00 | 2009-01-30 13:00 | 102.8d | 8.3d |  |  |  |  |  |
| 132 | 1.5.1.1 | Control y seguimiento al Proyecto 1 | 4h | 2008-07-25 09:00 A | 2008-07-25 13:00 A |  | 100% |  | 2008-07-25 09:00 | 2008-07-25 13:00 | 4h |  |  | start no earlier than 2008-07-25 08:00 |  |  |  |
| 133 | 1.5.1.2 | Control y seguimiento al Proyecto 2 | 4h | 2008-08-01 09:00 A | 2008-08-01 13:00 A |  | 100% |  | 2008-08-01 09:00 | 2008-08-01 13:00 | 4h |  |  | start no earlier than 2008-08-01 08:00 |  |  |  |
| 134 | 1.5.1.3 | Control y seguimiento al Proyecto 3 | 4h | 2008-08-08 09:00 A | 2008-08-08 13:00 A |  | 100% |  | 2008-08-08 09:00 | 2008-08-08 13:00 | 4h |  |  | start no earlier than 2008-08-08 08:00 |  |  |  |
| 135 | 1.5.1.4 | Control y seguimiento al Proyecto 4 | 4h | 2008-08-15 09:00 A | 2008-08-15 13:00 A |  | 100% |  | 2008-08-15 09:00 | 2008-08-15 13:00 | 4h |  |  | start no earlier than 2008-08-15 08:00 |  |  |  |
| 136 | 1.5.1.5 | Control y seguimiento al Proyecto 5 | 4h | 2008-08-22 09:00 A | 2008-08-22 13:00 A |  | 100% |  | 2008-08-22 09:00 | 2008-08-22 13:00 | 4h |  |  | start no earlier than 2008-08-22 08:00 |  |  |  |
| 137 | 1.5.1.6 | Control y seguimiento al Proyecto 6 | 4h | 2008-08-29 09:00 A | 2008-08-29 13:00 A |  | 100% |  | 2008-08-29 09:00 | 2008-08-29 13:00 | 4h |  |  | start no earlier than 2008-08-29 08:00 |  |  |  |
| 138 | 1.5.1.7 | Control y seguimiento al Proyecto 7 | 4h | 2008-09-05 09:00 | 2008-09-05 13:00 |  |  |  | 2008-09-05 09:00 | 2008-09-05 13:00 | 4h | 53.9d |  | start no earlier than 2008-09-05 08:00 |  |  |  |
| 139 | 1.5.1.8 | Control y seguimiento al Proyecto 8 | 4h | 2008-09-12 09:00 | 2008-09-12 13:00 |  |  |  | 2008-09-12 09:00 | 2008-09-12 13:00 | 4h | 49.9d |  | start no earlier than 2008-09-12 08:00 |  |  |  |
| 140 | 1.5.1.9 | Control y seguimiento al Proyecto 9 | 4h | 2008-09-19 09:00 | 2008-09-19 13:00 |  |  |  | 2008-09-19 09:00 | 2008-09-19 13:00 | 4h | 45.9d |  | start no earlier than 2008-09-19 08:00 |  |  |  |
| 141 | 1.5.1.10 | Control y seguimiento al Proyecto 10 | 4h | 2008-09-26 09:00 | 2008-09-26 13:00 |  |  |  | 2008-09-26 09:00 | 2008-09-26 13:00 | 4h | 41.9d |  | start no earlier than 2008-09-26 08:00 |  |  |  |
| 142 | 1.5.1.11 | Control y seguimiento al Proyecto 11 | 4h | 2008-10-03 09:00 | 2008-10-03 13:00 |  |  |  | 2008-10-03 09:00 | 2008-10-03 13:00 | 4h | 37.9d |  | start no earlier than 2008-10-03 08:00 |  |  |  |
| 143 | 1.5.1.12 | Control y seguimiento al Proyecto 12 | 4h | 2008-10-10 09:00 | 2008-10-10 13:00 |  |  |  | 2008-10-10 09:00 | 2008-10-10 13:00 | 4h | 33.9d |  | start no earlier than 2008-10-10 08:00 |  |  |  |
| 144 | 1.5.1.13 | Control y seguimiento al Proyecto 13 | 4h | 2008-10-17 09:00 | 2008-10-17 13:00 |  |  |  | 2008-10-17 09:00 | 2008-10-17 13:00 | 4h | 30.7d |  | start no earlier than 2008-10-17 08:00 |  |  |  |
| 145 | 1.5.1.14 | Control y seguimiento al Proyecto 14 | 4h | 2008-10-24 09:00 | 2008-10-24 13:00 |  |  |  | 2008-10-24 09:00 | 2008-10-24 13:00 | 4h | 26.7d |  | start no earlier than 2008-10-24 08:00 |  |  |  |
| 146 | 1.5.1.15 | Control y seguimiento al Proyecto 15 | 4h | 2008-10-31 09:00 | 2008-10-31 13:00 |  |  |  | 2008-10-31 09:00 | 2008-10-31 13:00 | 4h | 22.7d |  | start no earlier than 2008-10-31 08:00 |  |  |  |
| 147 | 1.5.1.16 | Control y seguimiento al Proyecto 16 | 4h | 2008-11-07 09:00 | 2008-11-07 13:00 |  |  |  | 2008-11-07 09:00 | 2008-11-07 13:00 | 4h | 19.5d |  | start no earlier than 2008-11-07 08:00 |  |  |  |
| 148 | 1.5.1.17 | Control y seguimiento al Proyecto 17 | 4h | 2008-11-14 09:00 | 2008-11-14 13:00 |  |  |  | 2008-11-14 09:00 | 2008-11-14 13:00 | 4h | 15.5d |  | start no earlier than 2008-11-14 08:00 |  |  |  |
| 149 | 1.5.1.18 | Control y seguimiento al Proyecto 18 | 4h | 2008-11-21 09:00 | 2008-11-21 13:00 |  |  |  | 2008-11-21 09:00 | 2008-11-21 13:00 | 4h | 12.3d |  | start no earlier than 2008-11-21 08:00 |  |  |  |
| 150 | 1.5.1.19 | Control y seguimiento al Proyecto 19 | 4h | 2008-11-28 09:00 | 2008-11-28 13:00 |  |  |  | 2008-11-28 09:00 | 2008-11-28 13:00 | 4h | 8.3d |  | start no earlier than 2008-11-28 08:00 |  |  |  |

Notes:
- 108: 26/09/2008: Está pendiente la instalación del Visual Source Safe en el servidor de infraestructura. Está pendiente la publicación del módulo de Administración en el web server. Pendiente la creación de la Matriz de seguridad.

| ID | WBS | Task | Type | Duration | Start | Finish | Predecessors | Baseline start | Baseline finish | Baseline duration | Total slack | Constraint |
| --- | --- | --- | --- | --- | --- | --- | --- | --- | --- | --- | --- | --- |
| 151 | 1.6 | **Entrega de Artefactos Fase Transición Iteración 1** |  | 4d | 2008-12-05 18:00 | 2008-12-15 18:00 | 124 | 2009-02-20 12:00 | 2009-02-23 16:00 | 1d? | 0d |  |
| 152 | 1.6.1 | Documento del Release 2 |  | 4d | 2008-12-05 18:00 | 2008-12-15 18:00 |  |  |  |  | 0d |  |
| 153 | 1.6.2 | Salida en producción del Release 2 | milestone | 0d | 2008-12-15 18:00 | 2008-12-15 18:00 | 152 |  |  |  | 0d | start no earlier than 2008-12-15 08:00 |
